# Schedule

Schedule from MS Project, 2017-01-03 to 2017-04-17.

## Calendars

- Myschedule: Mon 23:00-24:00; Tue-Fri 00:00-03:00, 04:00-08:00, 23:00-24:00; Sat 00:00-03:00, 04:00-08:00; Sun off. Exceptions (off unless hours are given): 2017-01-03 to 2017-04-17 00:00-03:00, 04:00-08:00, 23:00-24:00 (myProject, recurring).

## Resources

| Resource |
| --- |
| TEAM |
| DEV TEAM |
| QUYETTD |
| DUONGLV |
| DESIGN EAM |
| DESIGN TEAM |
| QA TEAM |
| TEST TEAM |
| TUANDL |
| HOANGLG |
| QUYETVV |
| QU |

## Schedule

| ID | WBS | Task | Type | Duration | Start | Finish | Predecessors | Resources | Work |
| --- | --- | --- | --- | --- | --- | --- | --- | --- | --- |
| 1 | 1 | **Carrier Trading Center(CTC)** |  | 105d | 2017-01-03 | 2017-04-17 |  |  | 2047h |
| 2 | 1.1 | **Initiation** |  | 15d | 2017-01-03 | 2017-01-17 |  |  | 258h |
| 3 | 1.1.1 | Form up team roles | manual | 1d | 2017-01-03 | 2017-01-03 |  | TEAM | 8h |
| 4 | 1.1.2 | Select project idea | manual | 1d | 2017-01-04 | 2017-01-04 |  | TEAM | 8h |
| 5 | 1.1.3 | **Develop project idea** |  | 2d | 2017-01-05 | 2017-01-07 |  |  | 16h |
| 6 | 1.1.3.1 | Define project scope | manual | 1d | 2017-01-05 | 2017-01-05 |  | TEAM | 8h |
| 7 | 1.1.3.2 | Define project features | manual | 1d | 2017-01-06 | 2017-01-06 |  | TEAM | 8h |
| 8 | 1.1.3.3 | Kick-off meeting | milestone, manual | 0d | 2017-01-05 | 2017-01-05 |  | TEAM |  |
| 9 | 1.1.4 | **Environment** |  | 1d | 2017-01-07 | 2017-01-08 | 5 |  | 8h |
| 10 | 1.1.4.1 | Create guideline to install and use tools & environments | manual | 1d | 2017-01-07 | 2017-01-07 |  | TEAM | 8h |
| 11 | 1.1.5 | **Install tools & environments** |  | 1d | 2017-01-10 | 2017-01-11 | 9 | TEAM | 48h |
| 12 | 1.1.5.1 | Install TortoiseGit | manual | 1d | 2017-01-10 | 2017-01-11 |  | TEAM | 8h |
| 13 | 1.1.5.2 | Install Visual Studio 2013 | manual | 1d | 2017-01-10 | 2017-01-11 | 12SS | TEAM | 8h |
| 14 | 1.1.5.3 | Install Microsoft MySQL | manual | 1d | 2017-01-10 | 2017-01-11 | 13SS | TEAM | 8h |
| 15 | 1.1.5.4 | Install Microsoft Project 2013 | manual | 1d | 2017-01-10 | 2017-01-11 | 14SS | TEAM | 8h |
| 16 | 1.1.5.5 | Install Sublime Text | manual | 1d | 2017-01-10 | 2017-01-11 | 15SS | TEAM | 8h |
| 17 | 1.1.6 | **Trainning using tools & environments** |  | 0.12d | 2017-01-11 | 2017-01-12 | 11 | TEAM | 170h |
| 18 | 1.1.6.1 | **Technology Research** |  | 6d | 2017-01-11 | 2017-01-17 |  | DEV TEAM | 72h |
| 19 | 1.1.6.1.1 | Study .JSF | manual | 1d | 2017-01-11 | 2017-01-11 |  | DUONGLV | 8h |
| 20 | 1.1.6.1.2 | Study spring framework | manual | 1d | 2017-01-11 | 2017-01-12 | 19SS | QUYETVV | 8h |
| 21 | 1.1.6.1.3 | Study Hibernate | manual | 1d | 2017-01-11 | 2017-01-12 | 20SS | HOANGLG | 8h |
| 22 | 1.1.6.2 | SRS/PP Review checklist | manual | 1d | 2017-01-11 | 2017-01-12 | 21SS | TUANDL | 8h |
| 23 | 1.1.6.3 | **Project Introduction** |  | 2d | 2017-01-12 | 2017-01-14 |  | DESIGN TEAM | 40h |
| 24 | 1.1.6.3.1 | Create Project Introduction | manual | 1d | 2017-01-12 | 2017-01-13 |  | QUYETTD | 8h |
| 25 | 1.1.6.3.2 | Review Project Introduction | manual | 1d | 2017-01-12 | 2017-01-13 | 24SS | DUONGLV | 8h |
| 26 | 1.1.6.3.3 | Update Project Introduction | manual | 1d | 2017-01-13 | 2017-01-14 | 25 | QUYETTD | 8h |
| 27 | 1.1.6.3.4 | Complete Project Introduction | manual | 1d | 2017-01-12 | 2017-01-13 | 25SS |  |  |

| ID | WBS | Task | Type | Duration | Start | Finish | Predecessors | Resources | Work |
| --- | --- | --- | --- | --- | --- | --- | --- | --- | --- |
| 28 | 1.1.6.4 | **Project Plan** |  | 2d | 2017-01-13 | 2017-01-15 |  |  | 32h |
| 29 | 1.1.6.4.1 | Create Project Plan in MS Word | manual | 1d | 2017-01-13 | 2017-01-14 |  | QUYETTD | 8h |
| 30 | 1.1.6.4.2 | Create Project Schedule in .mmp file | manual | 1d | 2017-01-13 | 2017-01-14 | 29SS | QUYETTD | 8h |
| 31 | 1.1.6.4.3 | Review Project Plan, Schedule | manual | 1d | 2017-01-14 | 2017-01-15 | 29, 30 | DUONGLV | 8h |
| 32 | 1.1.6.4.4 | Update Project Plan, Schedule | manual | 1d | 2017-01-14 | 2017-01-15 | 31SS | QUYETTD | 8h |
| 33 | 1.1.6.4.5 | Complete Project Plan | milestone, manual | 0d | 2017-01-13 | 2017-01-13 |  |  |  |
| 34 | 1.1.6.5 | **Q&A Sheet** |  | 1d | 2017-01-15 | 2017-01-16 |  | QA TEAM | 14h |
| 35 | 1.1.6.5.1 | Create Q&A sheet | manual | 3h | 2017-01-15 | 2017-01-16 |  | QUYETTD | 3h |
| 36 | 1.1.6.5.2 | Review Q&A sheet | manual | 3h | 2017-01-15 | 2017-01-16 |  | TUANDL | 3h |
| 37 | 1.1.6.6 | Create progress report 1 | manual | 2h | 2017-01-15 | 2017-01-16 |  | QUYETTD | 2h |
| 38 | 1.1.6.7 | Submit progress report 1 | manual | 0.12d | 2017-01-11 | 2017-01-12 |  | TUANDL | 1h |
| 39 | 1.2 | **Solution** |  | 20d | 2017-01-17 | 2017-02-05 |  |  | 456h |
| 40 | 1.2.1 | **Software Requirement Specification** |  | 2d | 2017-01-17 | 2017-01-19 |  | DESIGN TEAM | 56h |
| 41 | 1.2.1.1 | **Non-functional Requirements Specification** |  | 1d | 2017-01-17 | 2017-01-18 |  |  | 24h |
| 42 | 1.2.1.1.1 | Define Security Requirements | manual | 1d | 2017-01-17 | 2017-01-18 |  | TUANDL | 8h |
| 43 | 1.2.1.1.2 | Define Performane Requirements | manual | 1d | 2017-01-17 | 2017-01-18 | 42SS | HOANGLG | 8h |
| 44 | 1.2.1.1.3 | Define User-interface Requirements | manual | 1d | 2017-01-17 | 2017-01-18 | 43SS | TUANDL | 8h |
| 45 | 1.2.1.2 | **Functional Requirements Specification** |  | 1d | 2017-01-18 | 2017-01-19 |  |  | 16h |
| 46 | 1.2.1.2.1 | Define User Client Module functional Requirements | manual | 1d | 2017-01-18 | 2017-01-19 |  | DESIGN EAM | 8h |
| 47 | 1.2.1.2.2 | Define Admin Module functional Requirments | manual | 1d | 2017-01-18 | 2017-01-19 | 46SS | DESIGN EAM | 8h |
| 48 | 1.2.2 | **System Design** |  | 12d | 2017-01-19 | 2017-01-31 |  | TEAM | 296h |
| 49 | 1.2.2.1 | Create design review checklist | manual | 1d | 2017-01-19 | 2017-01-20 |  | TUANDL | 8h |
| 50 | 1.2.2.2 | **Architectural Design** |  | 2d | 2017-01-19 | 2017-01-21 | 45 | QUYETVV | 64h |
| 51 | 1.2.2.2.1 | Define architectural design | manual | 1d | 2017-01-19 | 2017-01-20 | 49SS | QUYETVV | 8h |
| 52 | 1.2.2.2.2 | Define system features | manual | 1d | 2017-01-19 | 2017-01-20 | 51SS | TEAM | 8h |
| 53 | 1.2.2.2.3 | Study and choose suitable architectural design | manual | 1d | 2017-01-19 | 2017-01-20 | 52SS | TEAM | 8h |
| 54 | 1.2.2.2.4 | Create Architectural design | manual | 1d | 2017-01-19 | 2017-01-20 | 53SS | QUYETVV | 8h |
| 55 | 1.2.2.2.5 | Review architectural design | manual | 1d | 2017-01-20 | 2017-01-21 |  | DUONGLV | 8h |
| 56 | 1.2.2.2.6 | Update Architectural Design | manual | 1d | 2017-01-20 | 2017-01-21 |  | QUYETVV | 8h |
| 57 | 1.2.2.2.7 | Complete Architectural Design version 1.0 | manual | 1d | 2017-01-20 | 2017-01-21 | 53 |  |  |

| ID | WBS | Task | Type | Duration | Start | Finish | Predecessors | Resources | Work |
| --- | --- | --- | --- | --- | --- | --- | --- | --- | --- |
| 58 | 1.2.2.3 | **Screen design** |  | 2d | 2017-01-21 | 2017-01-23 |  | TUANDL | 56h |
| 59 | 1.2.2.3.1 | Create screen flow document | manual | 1d | 2017-01-21 | 2017-01-22 |  | TUANDL | 8h |
| 60 | 1.2.2.3.2 | Create client screen design | manual | 1d | 2017-01-21 | 2017-01-22 | 59SS | TUANDL | 8h |
| 61 | 1.2.2.3.3 | Create admin screen design | manual | 1d | 2017-01-21 | 2017-01-22 | 60SS | TUANDL | 8h |
| 62 | 1.2.2.3.4 | Review screen design | manual | 1d | 2017-01-22 | 2017-01-23 | 60 | DUONGLV | 8h |
| 63 | 1.2.2.3.5 | Update screen design | manual | 1d | 2017-01-22 | 2017-01-23 | 62SS | TUANDL | 8h |
| 64 | 1.2.2.3.6 | Complete screen design | manual | 0.12d | 2017-01-21 | 2017-01-22 |  |  |  |
| 65 | 1.2.2.4 | **Database design** |  | 2d | 2017-01-23 | 2017-01-25 |  | DUONGLV | 40h |
| 66 | 1.2.2.4.1 | Create database design | manual | 1d | 2017-01-23 | 2017-01-24 |  | DUONGLV | 8h |
| 67 | 1.2.2.4.2 | Review database design | manual | 1d | 2017-01-24 | 2017-01-25 | 66 | HOANGLG | 8h |
| 68 | 1.2.2.4.3 | Update database design | manual | 1d | 2017-01-24 | 2017-01-25 | 67SS | DUONGLV | 8h |
| 69 | 1.2.2.4.4 | Complete database design | manual | 0.12d? | 2017-01-23 | 2017-01-24 |  |  |  |
| 70 | 1.2.2.5 | **Class/Component Design** |  | 4d | 2017-01-25 | 2017-01-29 |  |  | 32h |
| 71 | 1.2.2.5.1 | Define Class and Component | manual | 1d | 2017-01-25 | 2017-01-26 |  | DUONGLV | 8h |
| 72 | 1.2.2.5.2 | Create Class/component design | manual | 1d | 2017-01-25 | 2017-01-26 | 71SS | DUONGLV | 8h |
| 73 | 1.2.2.5.3 | Review Class/component design | manual | 1d | 2017-01-26 | 2017-01-27 | 72 | TUANDL | 8h |
| 74 | 1.2.2.5.4 | Update Class/component design | manual | 1d | 2017-01-27 | 2017-01-28 | 73 | DUONGLV | 8h |
| 75 | 1.2.2.5.5 | Complete Class/component design | milestone, manual | 0d | 2017-01-27 | 2017-01-27 | 73 |  |  |
| 76 | 1.2.3 | Create progress report 2 | manual | 1d | 2017-01-28 | 2017-01-29 |  | QUYETTD | 8h |
| 77 | 1.2.4 | Submit progress report 2 | manual | 1d | 2017-01-29 | 2017-01-30 | 76 | QUYETTD | 8h |
| 78 | 1.2.5 | **Testing** |  | 5d | 2017-01-30 | 2017-02-04 |  | TEST TEAM | 80h |
| 79 | 1.2.5.1 | Create test plan/case checklists | manual | 1d | 2017-01-30 | 2017-01-31 |  | QUYETTD | 8h |
| 80 | 1.2.5.2 | Create test plan | manual | 1d | 2017-01-30 | 2017-01-31 | 79SS | QUYETTD | 8h |
| 81 | 1.2.5.3 | Review test plan | manual | 1d | 2017-01-31 | 2017-02-01 | 80 | TUANDL | 8h |
| 82 | 1.2.5.4 | Update test plan | manual | 1d | 2017-01-31 | 2017-02-01 | 81SS | QUYETTD | 8h |
| 83 | 1.2.5.5 | Test plan complete | manual | 1d | 2017-02-01 | 2017-02-02 | 82 | QUYETTD | 8h |
| 84 | 1.2.6 | Create progress report 3 | manual | 1d | 2017-02-03 | 2017-02-04 |  | QUYETTD | 8h |
| 85 | 1.2.7 | Submit progress report 3 | milestone, manual | 0d | 2017-02-04 | 2017-02-04 | 84 |  |  |

| ID | WBS | Task | Type | Duration | Start | Finish | Predecessors | Resources | Work |
| --- | --- | --- | --- | --- | --- | --- | --- | --- | --- |
| 86 | 1.3 | **Construction** |  | 57d | 2017-02-05 | 2017-04-02 |  |  | 1101h |
| 87 | 1.3.1 | **Define Coding Standards** |  | 1d | 2017-02-05 | 2017-02-06 |  | DEV TEAM | 24h |
| 88 | 1.3.1.1 | Create Coding Convention | manual | 1d | 2017-02-05 | 2017-02-06 |  | DUONGLV | 8h |
| 89 | 1.3.1.2 | Create Code & UT Test review checklist | manual | 1d | 2017-02-05 | 2017-02-06 | 88SS | DUONGLV | 8h |
| 90 | 1.3.2 | **Screen Design** |  | 1d | 2017-02-05 | 2017-02-06 | 87SS | DESIGN EAM | 8h |
| 91 | 1.3.2.1 | Refine screen design document and prototype | manual | 1d | 2017-02-05 | 2017-02-06 |  |  |  |
| 92 | 1.3.3 | **Coding & Unit test** |  | 30d | 2017-02-06 | 2017-03-08 |  | DEV TEAM | 480h |
| 93 | 1.3.3.1 | Structure core modules & source code common | manual | 0.12d? | 2017-02-06 | 2017-02-07 |  |  |  |
| 94 | 1.3.3.2 | **Client User Module** |  | 19d | 2017-02-06 | 2017-02-25 |  |  | 176h |
| 95 | 1.3.3.2.1 | **Guest module** |  | 3d | 2017-02-06 | 2017-02-09 |  | DUONGLV | 48h |
| 96 | 1.3.3.2.1.1 | Manage price | manual | 1d | 2017-02-06 | 2017-02-07 |  | DUONGLV | 8h |
| 97 | 1.3.3.2.1.2 | Manage bill of lading | manual | 1d | 2017-02-07 | 2017-02-08 |  | DUONGLV | 8h |
| 98 | 1.3.3.2.1.3 | Register | manual | 1d | 2017-02-08 | 2017-02-09 |  | DUONGLV | 8h |
| 99 | 1.3.3.2.2 | **Carrier module** |  | 8d | 2017-02-09 | 2017-02-17 |  |  | 64h |
| 100 | 1.3.3.2.2.1 | Manage price | manual | 1d | 2017-02-07 | 2017-02-08 | 96 | TUANDL | 8h |
| 101 | 1.3.3.2.2.2 | Manage bill of lading | manual | 1d | 2017-02-08 | 2017-02-09 | 97 | QUYETVV | 8h |
| 102 | 1.3.3.2.2.3 | Manage profile | manual | 1d | 2017-02-11 | 2017-02-12 |  | QUYETVV | 8h |
| 103 | 1.3.3.2.2.4 | Login/Logout | manual | 1d | 2017-02-12 | 2017-02-13 |  | TUANDL | 8h |
| 104 | 1.3.3.2.2.5 | Auction bill of lading | manual | 1d | 2017-02-13 | 2017-02-14 |  | HOANGLG | 8h |
| 105 | 1.3.3.2.2.6 | Transaction history | manual | 1d | 2017-02-14 | 2017-02-15 |  | HOANGLG | 8h |
| 106 | 1.3.3.2.2.7 | Account recharge | manual | 1d | 2017-02-15 | 2017-02-16 |  | QUYETVV | 8h |
| 107 | 1.3.3.2.2.8 | Manage report | manual | 1d | 2017-02-16 | 2017-02-17 |  | TUANDL | 8h |
| 108 | 1.3.3.2.3 | **Goods owner module** |  | 8d | 2017-02-17 | 2017-02-25 |  |  | 64h |
| 109 | 1.3.3.2.3.1 | Manage price | manual | 1d | 2017-02-08 | 2017-02-09 | 100 | DUONGLV | 8h |
| 110 | 1.3.3.2.3.2 | Manage bill of lading | manual | 1d | 2017-02-09 | 2017-02-10 | 101 | DUONGLV | 8h |
| 111 | 1.3.3.2.3.3 | Manage profile | manual | 1d | 2017-02-19 | 2017-02-20 | 102 | QUYETVV | 8h |
| 112 | 1.3.3.2.3.4 | Login/Logout | manual | 1d | 2017-02-13 | 2017-02-14 | 103 | HOANGLG | 8h |
| 113 | 1.3.3.2.3.5 | Post bill of lading | manual | 1d | 2017-02-21 | 2017-02-22 | 104 | DUONGLV | 8h |
| 114 | 1.3.3.2.3.6 | Transaction history | manual | 1d | 2017-02-22 | 2017-02-23 | 105 | QUYETVV | 8h |
| 115 | 1.3.3.2.3.7 | Account recharge | manual | 1d | 2017-02-23 | 2017-02-24 | 106 | HOANGLG | 8h |
| 116 | 1.3.3.2.3.8 | Manage report | manual | 1d | 2017-02-17 | 2017-02-18 | 107 | TUANDL | 8h |

| ID | WBS | Task | Type | Duration | Start | Finish | Predecessors | Resources | Work |
| --- | --- | --- | --- | --- | --- | --- | --- | --- | --- |
| 117 | 1.3.3.3 | **Admin Module** |  | 10.12d | 2017-02-25 | 2017-03-06 |  |  | 56h |
| 118 | 1.3.3.3.1 | Login/ Logout | manual | 1d | 2017-02-25 | 2017-02-26 | 112 | TUANDL | 8h |
| 119 | 1.3.3.3.2 | Manage Users | manual | 1d | 2017-02-26 | 2017-02-27 |  | DUONGLV | 8h |
| 120 | 1.3.3.3.3 | Manage bill of lading | manual | 1d | 2017-02-27 | 2017-02-28 | 110 | HOANGLG | 8h |
| 121 | 1.3.3.3.4 | Manage price | manual | 1d | 2017-02-28 | 2017-03-01 | 109 | TUANDL | 8h |
| 122 | 1.3.3.3.5 | Manage profile | manual | 1d | 2017-03-01 | 2017-03-02 |  | QUYETVV | 8h |
| 123 | 1.3.3.3.6 | Transaction history | manual | 1d | 2017-03-02 | 2017-03-03 |  | QUYETVV | 8h |
| 124 | 1.3.3.3.7 | Manage report | manual | 1d | 2017-03-03 | 2017-03-04 | 116 | TUANDL | 8h |
| 125 | 1.3.3.4 | Complete Coding | manual | 1d | 2017-03-06 | 2017-03-07 |  | DUONGLV | 8h |
| 126 | 1.3.4 | Create Progress Report 4 | manual | 1d | 2017-03-07 | 2017-03-08 |  | DUONGLV | 8h |
| 127 | 1.3.5 | Submit Progress Report 4 | manual | 1d | 2017-03-08 | 2017-03-09 | 126 | QUYETTD | 8h |
| 128 | 1.3.6 | **Testing** |  | 0.12d | 2017-03-09 | 2017-03-10 |  | TEST TEAM | 573h |
| 129 | 1.3.6.1 | **Writing test case (continue)** |  | 14.12d | 2017-03-09 | 2017-03-22 |  | TEST TEAM | 338h |
| 130 | 1.3.6.1.1 | **System test case** |  | 2d | 2017-03-09 | 2017-03-11 |  | TEST TEAM | 40h |
| 131 | 1.3.6.1.1.1 | Create system test case | manual | 1d | 2017-03-09 | 2017-03-10 |  | QUYETTD | 8h |
| 132 | 1.3.6.1.1.2 | Review system test case | manual | 1d | 2017-03-10 | 2017-03-11 | 131 | TUANDL | 8h |
| 133 | 1.3.6.1.1.3 | Update system test case | manual | 1d | 2017-03-10 | 2017-03-11 |  | QUYETTD | 8h |
| 134 | 1.3.6.1.2 | **Integration test case** |  | 12.12d | 2017-03-11 | 2017-03-22 |  | TEST TEAM | 177h |
| 135 | 1.3.6.1.2.1 | Create integration test case | manual | 7d | 2017-03-11 | 2017-03-18 |  | TUANDL | 56h |
| 136 | 1.3.6.1.2.2 | Review integration test case | manual | 1d | 2017-03-18 | 2017-03-19 | 135 | QUYETTD | 8h |
| 137 | 1.3.6.1.2.3 | Update integration test case | manual | 2d | 2017-03-19 | 2017-03-21 | 136 | TUANDL | 16h |
| 138 | 1.3.6.1.3 | Writing test case complete | manual | 1d | 2017-03-21 | 2017-03-22 | 137 | QUYETTD | 8h |
| 139 | 1.3.6.2 | **Execute Test Round 1** |  | 6.12d | 2017-03-22 | 2017-03-27 |  | TEAM | 89h |
| 140 | 1.3.6.2.1 | Execute Integration Test | manual | 1d | 2017-03-22 | 2017-03-23 |  | QUYETTD | 8h |
| 141 | 1.3.6.2.2 | Fix bug Integration Test | manual | 1d | 2017-03-23 | 2017-03-24 |  | DEV TEAM | 8h |
| 142 | 1.3.6.2.3 | Execute System Test | manual | 1d | 2017-03-24 | 2017-03-25 |  | TUANDL | 8h |
| 143 | 1.3.6.2.4 | Fix bug System Test | manual | 2d | 2017-03-25 | 2017-03-27 | 142 | DEV TEAM | 16h |
| 144 | 1.3.6.3 | Update Test Case | manual | 1d | 2017-03-27 | 2017-03-28 |  | QUYETTD | 8h |

| ID | WBS | Task | Type | Duration | Start | Finish | Predecessors | Resources | Work |
| --- | --- | --- | --- | --- | --- | --- | --- | --- | --- |
| 145 | 1.3.6.4 | **Execute Test Round 2** |  | 6.12d | 2017-03-28 | 2017-04-02 |  | TEAM | 89h |
| 146 | 1.3.6.4.1 | Execute Integration Test | manual | 1d | 2017-03-28 | 2017-03-29 |  | TUANDL | 8h |
| 147 | 1.3.6.4.2 | Fix bug Integration Test | manual | 2d | 2017-03-29 | 2017-03-31 | 146 | DEV TEAM | 16h |
| 148 | 1.3.6.4.3 | Execute System Test | manual | 1d | 2017-03-31 | 2017-04-01 |  | QUYETTD | 8h |
| 149 | 1.3.6.4.4 | Fix bug System Test | manual | 1d | 2017-04-01 | 2017-04-02 | 148 | DEV TEAM | 8h |
| 150 | 1.3.6.5 | Create Test Report | manual | 1d | 2017-04-02 | 2017-04-03 |  | QUYETTD | 8h |
| 151 | 1.3.6.6 | Testing Complete | manual | 1d | 2017-04-03 | 2017-04-04 |  |  |  |
| 152 | 1.3.6.7 | **Quality Control** |  | 1d | 2017-04-01 | 2017-04-02 |  | QA TEAM | 32h |
| 153 | 1.3.6.7.1 | Create Quality Report | manual | 1d | 2017-04-01 | 2017-04-02 |  | QUYETTD | 8h |
| 154 | 1.3.6.7.2 | Review Quality Report | manual | 1d | 2017-04-02 | 2017-04-03 | 153 | DUONGLV | 8h |
| 155 | 1.3.6.7.3 | Update Quality Report | manual | 1d | 2017-04-03 | 2017-04-04 | 154 | QUYETTD | 8h |
| 156 | 1.3.6.8 | Create Progress Report 5 | manual | 1d | 2017-04-01 | 2017-04-02 |  | TUANDL | 8h |
| 157 | 1.3.6.9 | Submit Progress Report 5 | milestone, manual | 0d | 2017-04-02 | 2017-04-02 | 156 | TUANDL |  |
| 158 | 1.4 | **Termination** |  | 16d | 2017-04-02 | 2017-04-17 |  | DESIGN EAM | 232h |
| 159 | 1.4.1 | **Final Report Document** |  | 8d | 2017-04-02 | 2017-04-09 |  |  | 40h |
| 160 | 1.4.1.1 | Create Final Report document | manual | 2d | 2017-04-02 | 2017-04-04 |  | QUYETTD | 16h |
| 161 | 1.4.1.2 | Create Installing Guide | manual | 1d | 2017-04-04 | 2017-04-05 |  | HOANGLG | 8h |
| 162 | 1.4.1.3 | Create User Guideline | manual | 1d | 2017-04-05 | 2017-04-06 |  | HOANGLG | 8h |
| 163 | 1.4.1.4 | Create Slides for Final Presentation | manual | 1d | 2017-04-07 | 2017-04-08 |  | TUANDL | 8h |
| 164 | 1.4.2 | Submit all Final Documents and Source codes | manual | 1d | 2017-04-08 | 2017-04-09 | 160 |  |  |
| 165 | 1.4.3 | **Pre-closing** |  | 7d | 2017-04-09 | 2017-04-16 |  | TEAM | 56h |
| 166 | 1.4.3.1 | Trainning presentation | manual | 7d | 2017-04-09 | 2017-04-16 |  |  |  |
| 167 | 1.4.4 | **Closing** |  | 1d | 2017-04-16 | 2017-04-17 |  | TEAM | 8h |
| 168 | 1.4.4.1 | Presentation for Capstone Project | manual | 1d | 2017-04-16 | 2017-04-17 |  |  |  |
| 169 | 1.4.4.2 | Complete Project | manual | 1d | 2017-04-16 | 2017-04-17 | 168SS |  |  |
